# Projet Database Firewall

Schedule from Planner, 2017-02-06 to 2017-06-23.
Phase: Etat de l'art

## Calendars

- Calendrier Cassiopee: Mon-Sun as the base calendar. Exceptions (off unless hours are given): 2017-03-09 to 2017-03-10, 2017-03-27 to 2017-03-31, 2017-04-10 to 2017-04-14, 2017-05-01, 2017-05-08, 2017-05-25 to 2017-05-26.

## Resources

| Resource | Group | Rate |
| --- | --- | --- |
| Grégoire Menguy | Elève | 1 |
| Baptiste Polvé | Elève | 1 |
| Grégory Blanc | Client |  |

## Schedule

| ID | WBS | Task | Duration | Start | Finish | Predecessors | Complete | Constraint | Resources | Work |
| --- | --- | --- | --- | --- | --- | --- | --- | --- | --- | --- |
| 1 | 1 | Préparation du planning |  | 2017-02-06 08:00 | 2017-02-08 09:00 |  | 100% |  | Grégoire Menguy [25%]; Baptiste Polvé [75%] | 8h |
| 2 | 2 | **Etat de l'art** |  | 2017-02-08 09:00 | 2017-03-03 09:30 |  |  | must start on 2017-02-01 00:00 | Grégoire Menguy; Baptiste Polvé | 100h |
| 3 | 2.1 | Fonctionnement des parsers |  | 2017-02-08 09:00 | 2017-02-23 10:30 | 1 | 100% |  | Grégoire Menguy | 40h |
| 4 | 2.2 | Méthode de détections d'intrusions |  | 2017-02-23 10:30 | 2017-03-03 09:30 | 3 |  |  | Grégoire Menguy | 20h |
| 5 | 2.3 | Fonctionnement des autres DBFs |  | 2017-02-08 09:00 | 2017-02-23 10:30 | 1 | 20% |  | Baptiste Polvé | 40h |
| 6 | 3 | **Réunion 1** |  | 2017-02-23 08:00 | 2017-02-23 08:45 |  | 100% | must start on 2017-02-23 00:00 | Grégoire Menguy; Baptiste Polvé; Grégory Blanc | 1.25h |
| 7 | 3.1 | Présentation | 0.09d | 2017-02-23 08:00 | 2017-02-23 08:45 |  | 100% | must start on 2017-02-23 00:00 | Grégoire Menguy [33%]; Baptiste Polvé [33%]; Grégory Blanc [33%] | 0.75h |
| 8 | 3.2 | Compte Rendu | 0.06d | 2017-02-23 08:00 | 2017-02-23 08:30 |  | 100% | start no earlier than 2017-02-23 00:00 | Baptiste Polvé | 0.5h |
| 9 | 4 | Compte Rendu d'avancement | 0.06d | 2017-03-03 08:00 | 2017-03-03 08:30 |  |  | must start on 2017-03-03 00:00 | Grégoire Menguy; Baptiste Polvé | 1h |
| 10 | 5 | **Réunion 2** |  | 2017-03-07 08:00 | 2017-03-07 08:45 |  |  | must start on 2017-03-07 00:00 | Grégoire Menguy; Baptiste Polvé; Grégory Blanc | 1.25h |
| 11 | 5.1 | Présentation | 0.09d | 2017-03-07 08:00 | 2017-03-07 08:45 |  |  | must start on 2017-03-07 00:00 | Grégoire Menguy [33%]; Baptiste Polvé [33%]; Grégory Blanc [33%] | 0.75h |
| 12 | 5.2 | Compte Rendu | 0.06d | 2017-03-07 08:00 | 2017-03-07 08:30 |  |  | start no earlier than 2017-03-07 00:00 | Grégoire Menguy | 0.5h |
| 13 | 6 | **Revu de projet 1** | 0.25d | 2017-03-17 08:00 | 2017-03-17 10:00 |  |  | must start on 2017-03-17 00:00 | Grégoire Menguy; Baptiste Polvé [0%] | 4h |
| 14 | 6.1 | Préparation de la revue de projet 1 |  | 2017-03-17 08:00 | 2017-03-17 10:00 |  |  | must start on 2017-03-17 00:00 | Grégoire Menguy; Baptiste Polvé | 4h |
| 15 | 7 | Compte Rendu d'avancement | 0.06d | 2017-03-17 08:00 | 2017-03-17 08:30 |  |  | must start on 2017-03-17 00:00 | Grégoire Menguy; Baptiste Polvé | 1h |
| 16 | 8 | **Réunion 3** |  | 2017-03-20 08:00 | 2017-03-20 08:45 |  |  | must start on 2017-03-20 00:00 | Grégoire Menguy; Baptiste Polvé; Grégory Blanc | 1.25h |
| 17 | 8.1 | Présentation | 0.09d | 2017-03-20 08:00 | 2017-03-20 08:45 |  |  | must start on 2017-03-20 00:00 | Grégoire Menguy [33%]; Baptiste Polvé [33%]; Grégory Blanc [33%] | 0.75h |
| 18 | 8.2 | Comtpe Rendu | 0.06d | 2017-03-20 08:00 | 2017-03-20 08:30 |  |  | start no earlier than 2017-03-20 00:00 | Baptiste Polvé | 0.5h |
| 19 | 9 | Compte Rendu d'avancement | 0.06d | 2017-04-03 08:00 | 2017-04-03 08:30 |  |  | must start on 2017-03-31 00:00 | Grégoire Menguy; Baptiste Polvé | 1h |
| 20 | 10 | **Réunion 4** |  | 2017-04-03 08:00 | 2017-04-03 08:45 |  |  | must start on 2017-04-03 00:00 | Grégoire Menguy; Baptiste Polvé; Grégory Blanc | 1.25h |
| 21 | 10.1 | Présentation | 0.09d | 2017-04-03 08:00 | 2017-04-03 08:45 |  |  | must start on 2017-04-03 00:00 | Grégoire Menguy [33%]; Baptiste Polvé [33%]; Grégory Blanc [33%] | 0.75h |
| 22 | 10.2 | Compte Rendu | 0.06d | 2017-04-03 08:00 | 2017-04-03 08:30 |  |  | start no earlier than 2017-04-03 00:00 | Grégoire Menguy | 0.5h |
| 23 | 11 | **Pré-étude de développement** |  | 2017-03-03 09:30 | 2017-03-22 11:00 | 2 |  |  | Grégoire Menguy; Baptiste Polvé | 45h |
| 24 | 11.1 | Définition format traitement/analyse |  | 2017-03-03 09:30 | 2017-03-06 11:00 |  |  |  | Grégoire Menguy; Baptiste Polvé | 10h |
| 25 | 11.2 | Fonctionnement du protocole MySQL |  | 2017-03-06 11:00 | 2017-03-16 10:00 | 24 |  |  | Baptiste Polvé | 20h |
| 26 | 11.3 | Fonctionnement et mise en oeuvre d'un proxy |  | 2017-03-16 10:00 | 2017-03-22 11:00 | 25 |  |  | Baptiste Polvé | 15h |
| 27 | 12 | Compte Rendu d'avancement | 0.06d | 2017-04-17 08:00 | 2017-04-17 08:30 |  |  | must start on 2017-04-14 00:00 | Grégoire Menguy; Baptiste Polvé | 1h |

Notes:
- 2: Savoir comment les autres outils fonctionent / Se renseigner sur les différentes méthodes de / détection d'intrusion (par signature ...)
- 7: Validé par le client le 23/02/2017.
- 24: Cette tache a pour but de faire en sorte / que l'on puisse coder le client/server et / le parseur/analyseur parrallèelement.

| ID | WBS | Task | Duration | Start | Finish | Predecessors | Complete | Constraint | Resources | Work |
| --- | --- | --- | --- | --- | --- | --- | --- | --- | --- | --- |
| 28 | 13 | **Réunion 5** |  | 2017-04-17 08:00 | 2017-04-17 08:45 |  |  | must start on 2017-04-17 00:00 | Grégoire Menguy; Baptiste Polvé; Grégory Blanc | 1.25h |
| 29 | 13.1 | Présentation | 0.09d | 2017-04-17 08:00 | 2017-04-17 08:45 |  |  | must start on 2017-04-17 00:00 | Grégoire Menguy [33%]; Baptiste Polvé [33%]; Grégory Blanc [33%] | 0.75h |
| 30 | 13.2 | Compte Rendu | 0.06d | 2017-04-17 08:00 | 2017-04-17 08:30 |  |  | start no earlier than 2017-04-17 00:00 | Baptiste Polvé | 0.5h |
| 31 | 14 | **Développement de l'outil** |  | 2017-03-22 11:00 | 2017-05-29 09:30 | 23 |  |  | Grégoire Menguy; Baptiste Polvé | 165h |
| 32 | 14.1 | Dev client/serveur intégrant échanges SQL |  | 2017-03-22 11:00 | 2017-04-18 09:30 |  | 5% |  | Baptiste Polvé | 30h |
| 33 | 14.2 | Dev parseur |  | 2017-03-22 11:00 | 2017-04-18 09:30 |  |  | start no earlier than 2017-02-23 00:00 | Grégoire Menguy | 30h |
| 34 | 14.3 | Dev analyseur |  | 2017-04-18 09:30 | 2017-05-18 09:30 | 33 |  |  | Grégoire Menguy [60%]; Baptiste Polvé [40%] | 70h |
| 35 | 14.4 | Tests Unitaires |  | 2017-05-18 09:30 | 2017-05-22 10:00 | 34, 32 |  |  | Grégoire Menguy; Baptiste Polvé | 15h |
| 36 | 14.5 | Tests d'intégrations |  | 2017-05-22 10:00 | 2017-05-29 09:30 | 35 |  |  | Grégoire Menguy; Baptiste Polvé | 20h |
| 37 | 15 | Compte Rendu d'avancement | 0.06d | 2017-04-28 08:00 | 2017-04-28 08:30 |  |  | must start on 2017-04-28 00:00 | Grégoire Menguy; Baptiste Polvé | 1h |
| 38 | 16 | **Réunion 6** |  | 2017-05-02 08:00 | 2017-05-02 08:45 |  |  | must start on 2017-05-02 00:00 | Grégoire Menguy; Baptiste Polvé; Grégory Blanc | 1.25h |
| 39 | 16.1 | Présentation | 0.09d | 2017-05-02 08:00 | 2017-05-02 08:45 |  |  | must start on 2017-05-02 00:00 | Grégoire Menguy [33%]; Baptiste Polvé [33%]; Grégory Blanc [33%] | 0.75h |
| 40 | 16.2 | Compte Rendu | 0.06d | 2017-05-02 08:00 | 2017-05-02 08:30 |  |  | start no earlier than 2017-05-02 00:00 | Grégoire Menguy | 0.5h |
| 41 | 17 | Compte Rendu d'avancement | 0.06d | 2017-05-12 08:00 | 2017-05-12 08:30 |  |  | must start on 2017-05-12 00:00 | Grégoire Menguy; Baptiste Polvé | 1h |
| 42 | 18 | **Réunion 7** |  | 2017-05-15 08:00 | 2017-05-15 08:45 |  |  | must start on 2017-05-15 00:00 | Grégoire Menguy; Baptiste Polvé; Grégory Blanc | 1.25h |
| 43 | 18.1 | Présentation | 0.09d | 2017-05-15 08:00 | 2017-05-15 08:45 |  |  | must start on 2017-05-15 00:00 | Grégoire Menguy [33%]; Baptiste Polvé [33%]; Grégory Blanc [33%] | 0.75h |
| 44 | 18.2 | Compte Rendu | 0.06d | 2017-05-15 08:00 | 2017-05-15 08:30 |  |  | start no earlier than 2017-05-15 00:00 | Baptiste Polvé | 0.5h |
| 45 | 19 | **Evaluation de l'outil** |  | 2017-05-29 09:30 | 2017-05-30 10:00 | 31 |  |  | Grégoire Menguy; Baptiste Polvé | 13h |
| 46 | 19.1 | Test performance en temps |  | 2017-05-29 09:30 | 2017-05-30 08:30 |  |  |  | Grégoire Menguy; Baptiste Polvé | 5h |
| 47 | 19.2 | Test performance sécurité |  | 2017-05-29 09:30 | 2017-05-30 10:00 |  |  |  | Grégoire Menguy; Baptiste Polvé | 8h |
| 48 | 20 | Compte Rendu d'avancement | 0.06d | 2017-05-29 08:00 | 2017-05-29 08:30 |  |  | must start on 2017-05-26 00:00 | Grégoire Menguy; Baptiste Polvé | 1h |
| 49 | 21 | **Réunion 8** |  | 2017-05-29 08:00 | 2017-05-29 08:45 |  |  | must start on 2017-05-29 00:00 | Grégoire Menguy; Baptiste Polvé; Grégory Blanc | 1.25h |
| 50 | 21.1 | Présentation | 0.09d | 2017-05-29 08:00 | 2017-05-29 08:45 |  |  | must start on 2017-05-29 00:00 | Grégoire Menguy [33%]; Baptiste Polvé [33%]; Grégory Blanc [33%] | 0.75h |
| 51 | 21.2 | Compte Rendu | 0.06d | 2017-05-29 08:00 | 2017-05-29 08:30 |  |  | start no earlier than 2017-05-29 00:00 | Grégoire Menguy | 0.5h |

| ID | WBS | Task | Type | Duration | Start | Finish | Constraint | Resources | Work |
| --- | --- | --- | --- | --- | --- | --- | --- | --- | --- |
| 52 | 22 | **Revu de projet 2** |  | 0.38d | 2017-05-31 08:00 | 2017-05-31 11:00 | must start on 2017-05-31 00:00 | Grégoire Menguy [0%]; Baptiste Polvé [0%] | 6h |
| 53 | 22.1 | Préparation de la revue de projet 2 |  |  | 2017-05-31 08:00 | 2017-05-31 11:00 | must start on 2017-05-31 00:00 | Grégoire Menguy; Baptiste Polvé | 6h |
| 54 | 23 | **Remise du poster** |  | 0.62d | 2017-06-06 08:00 | 2017-06-07 09:30 | must start on 2017-06-06 00:00 | Grégoire Menguy; Baptiste Polvé | 10h |
| 55 | 23.1 | Préparation du poster |  |  | 2017-06-06 08:00 | 2017-06-07 09:30 | must start on 2017-06-06 00:00 | Grégoire Menguy; Baptiste Polvé | 10h |
| 56 | 24 | Compte Rendu d'avancement |  | 0.06d | 2017-06-09 08:00 | 2017-06-09 08:30 | must start on 2017-06-09 00:00 | Grégoire Menguy; Baptiste Polvé | 1h |
| 57 | 25 | **Réunion 9** |  |  | 2017-06-12 08:00 | 2017-06-12 08:45 | must start on 2017-06-12 00:00 | Grégoire Menguy; Baptiste Polvé; Grégory Blanc | 1.25h |
| 58 | 25.1 | Présentation |  | 0.09d | 2017-06-12 08:00 | 2017-06-12 08:45 | must start on 2017-06-12 00:00 | Grégoire Menguy [33%]; Baptiste Polvé [33%]; Grégory Blanc [33%] | 0.75h |
| 59 | 25.2 | Compte Rendu |  | 0.06d | 2017-06-12 08:00 | 2017-06-12 08:30 | start no earlier than 2017-06-12 00:00 | Baptiste Polvé | 0.5h |
| 60 | 26 | **Remise du planning détaillé** |  | 0.31d | 2017-06-15 08:00 | 2017-06-15 10:30 | must start on 2017-06-15 00:00 | Grégoire Menguy; Baptiste Polvé | 5h |
| 61 | 26.1 | Préparation du planning détaillé |  |  | 2017-06-15 08:00 | 2017-06-15 10:30 | must start on 2017-06-15 00:00 | Grégoire Menguy; Baptiste Polvé | 5h |
| 62 | 27 | Soutenance publique | milestone | 0d | 2017-06-21 08:00 | 2017-06-21 00:00 | must start on 2017-06-21 00:00 | Grégoire Menguy; Baptiste Polvé |  |
| 63 | 28 | Remise des prix | milestone | 0d | 2017-06-23 08:00 | 2017-06-23 00:00 | must start on 2017-06-23 00:00 | Grégoire Menguy; Baptiste Polvé |  |

Notes:
- 54: A valider avec l'encadrant. / mail J. Kohlenberg
- 60: Avoir un planning professionnel à la fin du projet. / mail J.Kohlenberg
