# Projet Database Firewall

Schedule from Planner, 2017-02-06 to 2017-06-23.
Phase: Etat de l'art

## Calendars

- Calendrier Cassiopee: Mon-Sun as the base calendar. Exceptions (off unless hours are given): 2017-03-09 to 2017-03-10, 2017-03-27 to 2017-03-31, 2017-04-10 to 2017-04-14, 2017-05-01, 2017-05-08, 2017-05-25 to 2017-05-26.

## Resources

| Resource | Group | Rate |
| --- | --- | --- |
| Grégoire Menguy | Elève | 1 |
| Baptiste Polvé | Elève | 1 |
| Grégory Blanc | Client |  |

## Schedule

| ID | WBS | Task | Type | Duration | Start | Finish | Predecessors | Constraint | Resources | Work |
| --- | --- | --- | --- | --- | --- | --- | --- | --- | --- | --- |
| 1 | 1 | [JALON] Lancement du projet | milestone | 0d | 2017-02-06 | 2017-02-06 |  |  | Grégoire Menguy; Baptiste Polvé; Grégory Blanc |  |
| 2 | 2 | **Etat de l'art** |  |  | 2017-02-06 | 2017-02-24 |  | must start on 2017-02-01 | Grégoire Menguy; Baptiste Polvé | 70h |
| 3 | 2.1 | Fonctionnement des parsers |  |  | 2017-02-06 | 2017-02-21 | 1 |  | Grégoire Menguy | 40h |
| 4 | 2.2 | Fonctionnement des autres DBFs |  |  | 2017-02-06 | 2017-02-13 | 1 |  | Baptiste Polvé | 20h |
| 5 | 2.3 | Méthode de détections d'intrusions |  |  | 2017-02-21 | 2017-02-24 | 3 |  | Grégoire Menguy | 10h |
| 6 | 2.4 | [JALON] Réunion 1 | milestone | 0d | 2017-02-23 | 2017-02-23 |  | must start on 2017-02-23 | Grégoire Menguy; Baptiste Polvé; Grégory Blanc |  |
| 7 | 3 | **Pré-étude de développement** |  |  | 2017-02-24 | 2017-03-14 | 2 |  | Grégoire Menguy; Baptiste Polvé | 40h |
| 8 | 3.1 | Définition format traitement/analyse |  |  | 2017-02-24 | 2017-02-27 |  |  | Grégoire Menguy; Baptiste Polvé | 10h |
| 9 | 3.2 | Fonctionnement du protocole MySQL |  |  | 2017-02-27 | 2017-03-07 | 8 |  | Baptiste Polvé | 20h |
| 10 | 3.3 | [JALON] Réunion 2 | milestone | 0d | 2017-03-07 | 2017-03-07 |  | must start on 2017-03-07 | Grégoire Menguy; Baptiste Polvé; Grégory Blanc |  |
| 11 | 3.4 | Fonctionnement et mise en oeuvre d'un proxy |  |  | 2017-03-07 | 2017-03-14 | 9 |  | Baptiste Polvé | 10h |
| 12 | 4 | **Développement de l'outil** |  |  | 2017-03-14 | 2017-05-29 | 7 |  | Grégoire Menguy; Baptiste Polvé | 205h |
| 13 | 4.1 | [LIVRAISON] Revue 1 de projet | milestone | 0d | 2017-03-17 | 2017-03-17 |  | must start on 2017-03-17 | Grégoire Menguy; Baptiste Polvé |  |
| 14 | 4.2 | Dev client/serveur intégrant échanges SQL |  |  | 2017-03-14 | 2017-04-17 | 7 |  | Baptiste Polvé | 50h |
| 15 | 4.3 | [JALON] Réunion 3 | milestone | 0d | 2017-03-24 | 2017-03-24 |  | must start on 2017-03-24 | Grégoire Menguy; Baptiste Polvé; Grégory Blanc |  |
| 16 | 4.4 | Dev parseur |  |  | 2017-03-14 | 2017-04-17 | 7 | start no earlier than 2017-02-23 | Grégoire Menguy | 50h |
| 17 | 4.5 | [JALON] Réunion 4 | milestone | 0d | 2017-04-20 | 2017-04-20 |  | must start on 2017-04-20 | Grégoire Menguy; Baptiste Polvé; Grégory Blanc |  |
| 18 | 4.6 | Tests Unitaires |  |  | 2017-04-17 | 2017-04-19 | 16, 14 |  | Grégoire Menguy; Baptiste Polvé | 15h |
| 19 | 4.7 | [JALON] Réunion 5 | milestone | 0d | 2017-05-04 | 2017-05-04 |  | must start on 2017-05-04 | Grégoire Menguy; Baptiste Polvé; Grégory Blanc |  |
| 20 | 4.8 | Dev analyseur |  |  | 2017-04-19 | 2017-05-24 | 18 |  | Grégoire Menguy [60%]; Baptiste Polvé [40%] | 80h |
| 21 | 4.9 | [JALON] Réunion 6 | milestone | 0d | 2017-05-23 | 2017-05-23 |  | must start on 2017-05-23 | Grégoire Menguy; Baptiste Polvé; Grégory Blanc |  |
| 22 | 4.10 | Tests d'intégrations |  |  | 2017-05-24 | 2017-05-29 | 20 |  | Grégoire Menguy; Baptiste Polvé | 10h |
| 23 | 5 | **Evaluation de l'outil** |  |  | 2017-05-30 | 2017-05-30 | 12 |  | Grégoire Menguy; Baptiste Polvé | 10h |
| 24 | 5.1 | Test performance en temps |  |  | 2017-05-30 | 2017-05-30 |  |  | Grégoire Menguy; Baptiste Polvé | 4h |
| 25 | 5.2 | Test performance sécurité |  |  | 2017-05-30 | 2017-05-30 |  |  | Grégoire Menguy; Baptiste Polvé | 6h |

| ID | WBS | Task | Type | Duration | Start | Finish | Predecessors | Constraint | Resources | Work |
| --- | --- | --- | --- | --- | --- | --- | --- | --- | --- | --- |
| 26 | 6 | **Amélioration** |  |  | 2017-05-30 | 2017-06-01 | 23 |  |  | 35h |
| 27 | 6.1 | Optimisation de la rapidité |  |  | 2017-05-30 | 2017-06-01 |  |  | Grégoire Menguy; Baptiste Polvé | 10h |
| 28 | 6.2 | Diminution des faux positifs |  |  | 2017-05-30 | 2017-06-01 |  |  | Grégoire Menguy; Baptiste Polvé | 10h |
| 29 | 6.3 | Diminution des faux négatifs |  |  | 2017-05-30 | 2017-06-01 |  |  | Grégoire Menguy; Baptiste Polvé | 15h |
| 30 | 7 | [LIVRAISON] Revue 2 de projet | milestone | 0d | 2017-05-31 | 2017-05-31 |  | must start on 2017-05-31 | Grégoire Menguy; Baptiste Polvé |  |
| 31 | 8 | **Ré-évaluation de l'outil** |  |  | 2017-06-02 | 2017-06-02 | 26 |  | Grégoire Menguy; Baptiste Polvé | 10h |
| 32 | 8.1 | Re Test performance en temps |  |  | 2017-06-02 | 2017-06-02 |  |  | Grégoire Menguy; Baptiste Polvé | 4h |
| 33 | 8.2 | Re Test performance en sécurité |  |  | 2017-06-02 | 2017-06-02 |  |  | Grégoire Menguy; Baptiste Polvé | 6h |
| 34 | 9 | [JALON] Réunion 7 | milestone | 0d | 2017-06-06 | 2017-06-06 |  | must start on 2017-06-06 | Grégoire Menguy; Baptiste Polvé; Grégory Blanc |  |
| 35 | 10 | [LIVRAISON] Poster + Rapport de synthèse | milestone | 0d | 2017-06-06 | 2017-06-06 |  | must start on 2017-06-06 | Grégoire Menguy; Baptiste Polvé |  |
| 36 | 11 | [LIVRAISON] Planning détaillé + Rapport | milestone | 0d | 2017-06-15 | 2017-06-15 |  | must start on 2017-06-15 | Grégoire Menguy; Baptiste Polvé |  |
| 37 | 12 | [JALON] Réunion 8 | milestone | 0d | 2017-06-20 | 2017-06-20 |  | must start on 2017-06-20 | Grégoire Menguy; Baptiste Polvé; Grégory Blanc |  |
| 38 | 13 | [LIVRAISON] Database Firewall v1 | milestone | 0d | 2017-06-20 | 2017-06-20 |  | must start on 2017-06-20 | Grégoire Menguy; Baptiste Polvé |  |
| 39 | 14 | [JALON] Soutenance publique | milestone | 0d | 2017-06-21 | 2017-06-21 |  | must start on 2017-06-21 | Grégoire Menguy; Baptiste Polvé |  |
| 40 | 15 | [JALON] Remise des prix | milestone | 0d | 2017-06-23 | 2017-06-23 |  | must start on 2017-06-23 | Grégoire Menguy; Baptiste Polvé |  |
